Schedule from a web Gantt chart, 2026-08-24 to 2026-09-07.
Saturdays and Sundays are off

## Schedule

| ID | WBS | Task | Duration | Start | Finish |
| --- | --- | --- | --- | --- | --- |
| 2 | 1 | SDV rework | 11d | 2026-08-24 | 2026-09-07 |
| 3 | 2 | **SDV-SIT DC module焊接验证** | 1d | 2026-08-24 | 2026-08-24 |
| 4 | 2.1 | 波峰焊验证 | 1d | 2026-08-24 | 2026-08-24 |
